# CronogramaRelease1

How a schedule from MS Project changed from version to version. A marks actual dates.

## Version 1 (saved 2024-11-17, file CronogramaRelease1.mpp)

Note of the change: Merge pull request #5 from Joaowip/release1

| ID | WBS | Task | Duration | Start | Finish | Predecessors | Complete | Total float |
| --- | --- | --- | --- | --- | --- | --- | --- | --- |
| 1 | 1 | **Projeto Barbearia** | 24.3d? | 2024-09-23 A | 2024-10-25 |  | 1% | 0d |
| 2 | 1.1 | **Prospecção** | 1.48d? | 2024-09-23 A | 2024-09-24 |  | 3% | 0d |
| 3 | 1.1.1 | **PTEC** | 1.01d? | 2024-09-23 A | 2024-09-24 |  | 2% | 0d |
| 4 |  | Estudar domínio de aplicação | 0.12d | 2024-09-23 A | 2024-09-23 |  | 7% | -0.89d |
| 5 |  | Reunir-se com o cliente | 0.25d? | 2024-09-23 | 2024-09-23 | 4 |  | -0.89d |
| 6 |  | Redigir PTEC | 0.52d? | 2024-09-23 | 2024-09-23 | 5 |  | -0.89d |
| 7 |  | Revisar PTEC | 0.12d? | 2024-09-23 A | 2024-09-24 | 6 | 7% | -1.01d |
| 8 | 1.1.2 | **Estimativa Preliminar de Tamanho** | 1.12d? | 2024-09-23 A | 2024-09-24 |  | 7% | 0d |
| 9 |  | Estimar tamanho do projeto | 0.12d? | 2024-09-23 A | 2024-09-24 | 7 | 7% | -1.12d |
| 10 | 1.1.3 | **Cronograma e Orçamento** | 1.48d? | 2024-09-23 A | 2024-09-24 |  | 5% | 0d |
| 11 |  | Elaborar cronograma e orçamento preliminares | 0.25d? | 2024-09-23 A | 2024-09-24 | 9 | 4% | -1.36d |
| 12 |  | Revisar cronograma e orçamento preliminares | 0.12d? | 2024-09-23 A | 2024-09-24 | 11 | 7% | -1.48d |
| 13 | 1.2 | **Análise** | 7.3d | 2024-09-23 A | 2024-10-02 | 2 | 14% | 0d |
| 14 | 1.2.1 | **Documento de Requisitos** | 6.46d | 2024-09-23 A | 2024-10-01 |  | 11% | 0d |
| 15 |  | Reunir-se com o cliente | 1d | 2024-09-23 A | 2024-09-25 | 12 | 16% | 0d |
| 16 |  | Elaborar DRE | 2.62d | 2024-09-23 A | 2024-09-27 | 15 | 6% | 0d |
| 17 |  | Revisar DRE | 1d | 2024-09-23 A | 2024-09-30 | 16 | 16% | 0d |
| 18 |  | Submeter DRE para aprovação do cliente | 1d | 2024-09-23 A | 2024-10-01 | 17 | 16% | 0d |
| 19 | 1.2.2 | **MRB** | 7.3d | 2024-09-23 A | 2024-10-02 |  | 25% | 0d |
| 20 |  | Elaborar MRB | 1d | 2024-09-23 A | 2024-10-02 | 18 | 16% | 0d |
| 21 |  | Revisar MRB | 0.12d | 2024-09-23 A | 2024-09-23 A | 20 | 100% |  |
| 22 | 1.3 | **Projeto** | 5d? | 2024-10-02 | 2024-10-09 | 13 |  | 0d |
| 23 | 1.3.1 | **Diagrama de Classes** | 3d? | 2024-10-02 | 2024-10-07 |  |  | 0d |
| 24 |  | Elaborar Diagrama de Classe | 1d? | 2024-10-02 | 2024-10-03 | 21 |  | 0d |
| 25 |  | Revisar Driagrama de Classe | 1d? | 2024-10-03 | 2024-10-04 | 24 |  | 0d |
| 26 |  | Atualizar MRB | 1d | 2024-10-04 | 2024-10-07 | 25 |  | 0d |
| 27 | 1.3.2 | **Modelo E-R** | 2d? | 2024-10-07 | 2024-10-09 |  |  | 0d |
| 28 |  | Elaborar MER | 1d? | 2024-10-07 | 2024-10-08 | 26 |  | 0d |
| 29 |  | Revisar MER | 1d? | 2024-10-08 | 2024-10-09 | 28 |  | 0d |
| 30 | 1.4 | **Implementação** | 10d? | 2024-10-09 | 2024-10-23 | 22 |  | 0d |
| 31 | 1.4.1 | **Release 01** | 3d? | 2024-10-09 | 2024-10-14 |  |  | 0d |
| 32 | 1.4.1.1 | **Implementação** | 2d? | 2024-10-09 | 2024-10-11 |  |  | 0d |
| 33 |  | [RFS01] Cadastrar Usuários | 1d? | 2024-10-09 | 2024-10-10 |  |  | 0d |
| 34 |  | [RFS02] Consultar Usuários | 1d? | 2024-10-10 | 2024-10-11 | 33 |  | 0d |
| 35 |  | [RFS03] Atualizar Usuários | 1d? | 2024-10-10 | 2024-10-11 | 33 |  | 0d |
| 36 |  | [RFS04] Remover Usuários | 1d? | 2024-10-10 | 2024-10-11 | 33 |  | 0d |
| 37 |  | [RFS05] Cadastrar Clientes | 1d? | 2024-10-09 | 2024-10-10 |  |  | 0d |
| 38 |  | [RFS06] Consultar Clientes | 1d? | 2024-10-10 | 2024-10-11 | 37 |  | 0d |
| 39 |  | [RFS07] Atualizar Clientes | 1d? | 2024-10-10 | 2024-10-11 | 37 |  | 0d |
| 40 |  | [RFS08] Remover Clientes | 1d? | 2024-10-10 | 2024-10-11 | 37 |  | 0d |
| 41 | 1.4.1.2 | **Teste** | 2d? | 2024-10-10 | 2024-10-14 |  |  | 0d |
| 42 |  | [RFS01] Cadastrar Usuários | 1d? | 2024-10-10 | 2024-10-11 | 33 |  | 1d |
| 43 |  | [RFS02] Consultar Usuários | 1d? | 2024-10-11 | 2024-10-14 | 34 |  | 0d |
| 44 |  | [RFS03] Atualizar Usuários | 1d? | 2024-10-11 | 2024-10-14 | 35 |  | 0d |
| 45 |  | [RFS04] Remover Usuários | 1d? | 2024-10-11 | 2024-10-14 | 36 |  | 0d |
| 46 |  | [RFS05] Cadastrar Clientes | 1d? | 2024-10-10 | 2024-10-11 | 37 |  | 1d |
| 47 |  | [RFS06] Consultar Clientes | 1d? | 2024-10-11 | 2024-10-14 | 38 |  | 0d |
| 48 |  | [RFS07] Atualizar Clientes | 1d? | 2024-10-11 | 2024-10-14 | 39 |  | 0d |
| 49 |  | [RFS08] Remover Clientes | 1d? | 2024-10-11 | 2024-10-14 | 40 |  | 0d |
| 50 | 1.4.2 | **Release 02** | 3d? | 2024-10-14 | 2024-10-17 | 31 |  | 0d |
| 51 | 1.4.2.1 | **Implementação** | 2d? | 2024-10-14 | 2024-10-16 |  |  | 0d |
| 52 |  | [RFS09] Cadastrar Agendamento | 1d? | 2024-10-14 | 2024-10-15 |  |  | 0d |
| 53 |  | [RFS10] Consultar Agendamento | 1d? | 2024-10-15 | 2024-10-16 | 52 |  | 0d |
| 54 |  | [RFS11] Atualizar Agendamento | 1d? | 2024-10-15 | 2024-10-16 | 52 |  | 0d |
| 55 |  | [RFS12] Remover Agendamento | 1d? | 2024-10-15 | 2024-10-16 | 52 |  | 0d |
| 56 |  | [RFS13] Cadastrar Atendimento | 1d? | 2024-10-14 | 2024-10-15 |  |  | 0d |
| 57 |  | [RFS14] Consultar Atendimento | 1d? | 2024-10-15 | 2024-10-16 | 56 |  | 0d |
| 58 |  | [RFS15] Atualizar Atendimento | 1d? | 2024-10-15 | 2024-10-16 | 56 |  | 0d |
| 59 |  | [RFS16] Remover Atendimento | 1d? | 2024-10-15 | 2024-10-16 | 56 |  | 0d |
| 60 | 1.4.2.2 | **Teste** | 2d? | 2024-10-15 | 2024-10-17 |  |  | 0d |
| 61 |  | [RFS09] Cadastrar Agendamento | 1d? | 2024-10-15 | 2024-10-16 | 52 |  | 1d |
| 62 |  | [RFS10] Consultar Agendamento | 1d? | 2024-10-16 | 2024-10-17 | 53 |  | 0d |
| 63 |  | [RFS11] Atualizar Agendamento | 1d? | 2024-10-16 | 2024-10-17 | 54 |  | 0d |
| 64 |  | [RFS12] Remover Agendamento | 1d? | 2024-10-16 | 2024-10-17 | 55 |  | 0d |
| 65 |  | [RFS13] Cadastrar Atendimento | 1d? | 2024-10-15 | 2024-10-16 | 56 |  | 1d |
| 66 |  | [RFS14] Consultar Atendimento | 1d? | 2024-10-16 | 2024-10-17 | 57 |  | 0d |
| 67 |  | [RFS15] Atualizar Atendimento | 1d? | 2024-10-16 | 2024-10-17 | 58 |  | 0d |
| 68 |  | [RFS16] Remover Atendimento | 1d? | 2024-10-16 | 2024-10-17 | 59 |  | 0d |
| 69 | 1.4.3 | **Release 03** | 4d? | 2024-10-17 | 2024-10-23 | 50 |  | 0d |
| 70 | 1.4.3.1 | **Implementação** | 3d? | 2024-10-17 | 2024-10-22 |  |  | 0d |

| ID | WBS | Task | Duration | Start | Finish | Predecessors | Total float |
| --- | --- | --- | --- | --- | --- | --- | --- |
| 71 |  | [RFS17] - Cadastrar Produtos do Estoque | 1d? | 2024-10-17 | 2024-10-18 |  | 0d |
| 72 |  | [RFS18] - Consultar Produtos do Estoque | 1d? | 2024-10-18 | 2024-10-21 | 71 | 0d |
| 73 |  | [RFS19] - Atualizar Produtos do Estoque | 1d? | 2024-10-18 | 2024-10-21 | 71 | 0d |
| 74 |  | [RFS20] - Remover Produtos do Estoque | 1d? | 2024-10-18 | 2024-10-21 | 71 | 0d |
| 75 |  | [RFS21] - Cadastrar Despesas Financeiras | 1d? | 2024-10-17 | 2024-10-18 |  | 0d |
| 76 |  | [RFS22] - Consultar Despesas Financeiras | 1d? | 2024-10-18 | 2024-10-21 | 75 | 0d |
| 77 |  | [RFS23] - Atualizar Despesas Financeiras | 1d? | 2024-10-18 | 2024-10-21 | 75 | 0d |
| 78 |  | [RFS24] - Remover Despesas Financeiras | 1d? | 2024-10-18 | 2024-10-21 | 75 | 0d |
| 79 |  | [RFS25] - Gerar Relatórios de Desempenho | 1d? | 2024-10-21 | 2024-10-22 | 71, 72, 73, 74, 75, 76, 77, 78 | 0d |
| 80 |  | [RFS26] - Emitir Guia de Controle de Estoque | 1d? | 2024-10-21 | 2024-10-22 | 71, 72, 73, 74 | 0d |
| 81 | 1.4.3.2 | **Teste** | 3d? | 2024-10-18 | 2024-10-23 |  | 0d |
| 82 |  | [RFS17] - Cadastrar Produtos do Estoque | 1d? | 2024-10-18 | 2024-10-21 | 71 | 2d |
| 83 |  | [RFS18] - Consultar Produtos do Estoque | 1d? | 2024-10-21 | 2024-10-22 | 72 | 1d |
| 84 |  | [RFS19] - Atualizar Produtos do Estoque | 1d? | 2024-10-21 | 2024-10-22 | 73 | 1d |
| 85 |  | [RFS20] - Remover Produtos do Estoque | 1d? | 2024-10-21 | 2024-10-22 | 74 | 1d |
| 86 |  | [RFS21] - Cadastrar Despesas Financeiras | 1d? | 2024-10-18 | 2024-10-21 | 75 | 2d |
| 87 |  | [RFS22] - Consultar Despesas Financeiras | 1d? | 2024-10-21 | 2024-10-22 | 76 | 1d |
| 88 |  | [RFS23] - Atualizar Despesas Financeiras | 1d? | 2024-10-21 | 2024-10-22 | 77 | 1d |
| 89 |  | [RFS24] - Remover Despesas Financeiras | 1d? | 2024-10-21 | 2024-10-22 | 78 | 1d |
| 90 |  | [RFS25] - Gerar Relatórios de Desempenho | 1d? | 2024-10-22 | 2024-10-23 | 79 | 0d |
| 91 |  | [RFS26] - Emitir Guia de Controle de Estoque | 1d? | 2024-10-22 | 2024-10-23 | 80 | 0d |
| 92 | 1.5 | **Monitoramento e Controle** | 1d? | 2024-10-23 | 2024-10-24 | 30 | 0d |
| 93 |  | Acompanhar projeto | 1d? | 2024-10-23 | 2024-10-24 |  | 0d |
| 94 | 1.6 | **Gerencia de Configuração** | 1d? | 2024-10-24 | 2024-10-25 | 92 | 0d |
| 95 |  | Elaborar Branch | 1d? | 2024-10-24 | 2024-10-25 |  | 0d |
| 96 |  | Realizar Merge da Branch X para a Trunk | 1d? | 2024-10-24 | 2024-10-25 |  | 0d |

## Version 2 (saved 2024-11-18, file CronogramaRelease2.mpp)

Note of the change: Merge pull request #9 from Joaowip/release2

Last finish stays 2024-10-25. Complete tasks 1 → 50.

Changed:

| ID | Task | Start | Finish | Complete | Total float |
| --- | --- | --- | --- | --- | --- |
| 1 | **Projeto Barbearia** |  |  | 1% → 66% |  |
| 2 | **Prospecção** |  | 2024-09-24 A | 3% → 100% | 0d → none |
| 3 | **PTEC** |  | 2024-09-24 A | 2% → 100% | 0d → none |
| 4 | Estudar domínio de aplicação |  | 2024-09-23 A | 7% → 100% | -0.89d → none |
| 5 | Reunir-se com o cliente | 2024-09-23 A | 2024-09-23 A | 0% → 100% | -0.89d → none |
| 6 | Redigir PTEC | 2024-09-23 A | 2024-09-23 A | 0% → 100% | -0.89d → none |
| 7 | Revisar PTEC |  | 2024-09-24 A | 7% → 100% | -1.01d → none |
| 8 | **Estimativa Preliminar de Tamanho** |  | 2024-09-24 A | 7% → 100% | 0d → none |
| 9 | Estimar tamanho do projeto |  | 2024-09-24 A | 7% → 100% | -1.12d → none |
| 10 | **Cronograma e Orçamento** |  | 2024-09-24 A | 5% → 100% | 0d → none |
| 11 | Elaborar cronograma e orçamento preliminares |  | 2024-09-24 A | 4% → 100% | -1.36d → none |
| 12 | Revisar cronograma e orçamento preliminares |  | 2024-09-24 A | 7% → 100% | -1.48d → none |
| 13 | **Análise** |  | 2024-10-02 A | 14% → 100% | 0d → none |
| 14 | **Documento de Requisitos** |  | 2024-10-01 A | 11% → 100% | 0d → none |
| 15 | Reunir-se com o cliente |  | 2024-09-25 A | 16% → 100% | 0d → none |
| 16 | Elaborar DRE |  | 2024-09-27 A | 6% → 100% | 0d → none |
| 17 | Revisar DRE |  | 2024-09-30 A | 16% → 100% | 0d → none |
| 18 | Submeter DRE para aprovação do cliente |  | 2024-10-01 A | 16% → 100% | 0d → none |
| 19 | **MRB** |  | 2024-10-02 A | 25% → 100% | 0d → none |
| 20 | Elaborar MRB |  | 2024-10-02 A | 16% → 100% | 0d → none |
| 22 | **Projeto** | 2024-10-02 A | 2024-10-09 A | 0% → 100% | 0d → none |
| 23 | **Diagrama de Classes** | 2024-10-02 A | 2024-10-07 A | 0% → 100% | 0d → none |
| 24 | Elaborar Diagrama de Classe | 2024-10-02 A | 2024-10-03 A | 0% → 100% | 0d → none |
| 25 | Revisar Driagrama de Classe | 2024-10-03 A | 2024-10-04 A | 0% → 100% | 0d → none |
| 26 | Atualizar MRB | 2024-10-04 A | 2024-10-07 A | 0% → 100% | 0d → none |
| 27 | **Modelo E-R** | 2024-10-07 A | 2024-10-09 A | 0% → 100% | 0d → none |
| 28 | Elaborar MER | 2024-10-07 A | 2024-10-08 A | 0% → 100% | 0d → none |
| 29 | Revisar MER | 2024-10-08 A | 2024-10-09 A | 0% → 100% | 0d → none |
| 30 | **Implementação** | 2024-10-09 A |  | 0% → 62% |  |
| 31 | **Release 01** | 2024-10-09 A | 2024-10-14 A | 0% → 100% | 0d → none |
| 32 | **Implementação** | 2024-10-09 A | 2024-10-11 A | 0% → 100% | 0d → none |
| 33 | [RFS01] Cadastrar Usuários | 2024-10-09 A | 2024-10-10 A | 0% → 100% | 0d → none |
| 34 | [RFS02] Consultar Usuários | 2024-10-10 A | 2024-10-11 A | 0% → 100% | 0d → none |
| 35 | [RFS03] Atualizar Usuários | 2024-10-10 A | 2024-10-11 A | 0% → 100% | 0d → none |
| 36 | [RFS04] Remover Usuários | 2024-10-10 A | 2024-10-11 A | 0% → 100% | 0d → none |
| 37 | [RFS05] Cadastrar Clientes | 2024-10-09 A | 2024-10-10 A | 0% → 100% | 0d → none |
| 38 | [RFS06] Consultar Clientes | 2024-10-10 A | 2024-10-11 A | 0% → 100% | 0d → none |
| 39 | [RFS07] Atualizar Clientes | 2024-10-10 A | 2024-10-11 A | 0% → 100% | 0d → none |
| 40 | [RFS08] Remover Clientes | 2024-10-10 A | 2024-10-11 A | 0% → 100% | 0d → none |
| 41 | **Teste** | 2024-10-10 A | 2024-10-14 A | 0% → 100% | 0d → none |
| 42 | [RFS01] Cadastrar Usuários | 2024-10-10 A | 2024-10-11 A | 0% → 100% | 1d → none |
| 43 | [RFS02] Consultar Usuários | 2024-10-11 A | 2024-10-14 A | 0% → 100% | 0d → none |
| 44 | [RFS03] Atualizar Usuários | 2024-10-11 A | 2024-10-14 A | 0% → 100% | 0d → none |
| 45 | [RFS04] Remover Usuários | 2024-10-11 A | 2024-10-14 A | 0% → 100% | 0d → none |
| 46 | [RFS05] Cadastrar Clientes | 2024-10-10 A | 2024-10-11 A | 0% → 100% | 1d → none |
| 47 | [RFS06] Consultar Clientes | 2024-10-11 A | 2024-10-14 A | 0% → 100% | 0d → none |
| 48 | [RFS07] Atualizar Clientes | 2024-10-11 A | 2024-10-14 A | 0% → 100% | 0d → none |
| 49 | [RFS08] Remover Clientes | 2024-10-11 A | 2024-10-14 A | 0% → 100% | 0d → none |
| 50 | **Release 02** | 2024-10-14 A | 2024-10-17 A | 0% → 100% | 0d → none |
| 51 | **Implementação** | 2024-10-14 A | 2024-10-16 A | 0% → 100% | 0d → none |
| 52 | [RFS09] Cadastrar Agendamento | 2024-10-14 A | 2024-10-15 A | 0% → 100% | 0d → none |
| 53 | [RFS10] Consultar Agendamento | 2024-10-15 A | 2024-10-16 A | 0% → 100% | 0d → none |
| 54 | [RFS11] Atualizar Agendamento | 2024-10-15 A | 2024-10-16 A | 0% → 100% | 0d → none |
| 55 | [RFS12] Remover Agendamento | 2024-10-15 A | 2024-10-16 A | 0% → 100% | 0d → none |
| 56 | [RFS13] Cadastrar Atendimento | 2024-10-14 A | 2024-10-15 A | 0% → 100% | 0d → none |
| 57 | [RFS14] Consultar Atendimento | 2024-10-15 A | 2024-10-16 A | 0% → 100% | 0d → none |
| 58 | [RFS15] Atualizar Atendimento | 2024-10-15 A | 2024-10-16 A | 0% → 100% | 0d → none |
| 59 | [RFS16] Remover Atendimento | 2024-10-15 A | 2024-10-16 A | 0% → 100% | 0d → none |
| 60 | **Teste** | 2024-10-15 A | 2024-10-17 A | 0% → 100% | 0d → none |
| 61 | [RFS09] Cadastrar Agendamento | 2024-10-15 A | 2024-10-16 A | 0% → 100% | 1d → none |
| 62 | [RFS10] Consultar Agendamento | 2024-10-16 A | 2024-10-17 A | 0% → 100% | 0d → none |
| 63 | [RFS11] Atualizar Agendamento | 2024-10-16 A | 2024-10-17 A | 0% → 100% | 0d → none |
| 64 | [RFS12] Remover Agendamento | 2024-10-16 A | 2024-10-17 A | 0% → 100% | 0d → none |
| 65 | [RFS13] Cadastrar Atendimento | 2024-10-15 A | 2024-10-16 A | 0% → 100% | 1d → none |
| 66 | [RFS14] Consultar Atendimento | 2024-10-16 A | 2024-10-17 A | 0% → 100% | 0d → none |
| 67 | [RFS15] Atualizar Atendimento | 2024-10-16 A | 2024-10-17 A | 0% → 100% | 0d → none |
| 68 | [RFS16] Remover Atendimento | 2024-10-16 A | 2024-10-17 A | 0% → 100% | 0d → none |

## Version 3 (saved 2024-11-19, file CronogramaRelease3.mpp)

Note of the change: Merge pull request #14 from Joaowip/release3

Last finish stays 2024-10-25. Complete tasks 50 → 66.

Changed:

| ID | Task | Start | Finish | Complete | Total float |
| --- | --- | --- | --- | --- | --- |
| 1 | **Projeto Barbearia** |  |  | 66% → 90% |  |
| 30 | **Implementação** |  |  | 62% → 92% |  |
| 69 | **Release 03** | 2024-10-17 A |  | 0% → 80% |  |
| 70 | **Implementação** | 2024-10-17 A |  | 0% → 80% |  |
| 71 | [RFS17] - Cadastrar Produtos do Estoque | 2024-10-17 A | 2024-10-18 A | 0% → 100% | 0d → none |
| 72 | [RFS18] - Consultar Produtos do Estoque | 2024-10-18 A | 2024-10-21 A | 0% → 100% | 0d → none |
| 73 | [RFS19] - Atualizar Produtos do Estoque | 2024-10-18 A | 2024-10-21 A | 0% → 100% | 0d → none |
| 74 | [RFS20] - Remover Produtos do Estoque | 2024-10-18 A | 2024-10-21 A | 0% → 100% | 0d → none |
| 75 | [RFS21] - Cadastrar Despesas Financeiras | 2024-10-17 A | 2024-10-18 A | 0% → 100% | 0d → none |
| 76 | [RFS22] - Consultar Despesas Financeiras | 2024-10-18 A | 2024-10-21 A | 0% → 100% | 0d → none |
| 77 | [RFS23] - Atualizar Despesas Financeiras | 2024-10-18 A | 2024-10-21 A | 0% → 100% | 0d → none |
| 78 | [RFS24] - Remover Despesas Financeiras | 2024-10-18 A | 2024-10-21 A | 0% → 100% | 0d → none |
| 81 | **Teste** | 2024-10-18 A |  | 0% → 80% |  |
| 82 | [RFS17] - Cadastrar Produtos do Estoque | 2024-10-18 A | 2024-10-21 A | 0% → 100% | 2d → none |
| 83 | [RFS18] - Consultar Produtos do Estoque | 2024-10-21 A | 2024-10-22 A | 0% → 100% | 1d → none |
| 84 | [RFS19] - Atualizar Produtos do Estoque | 2024-10-21 A | 2024-10-22 A | 0% → 100% | 1d → none |
| 85 | [RFS20] - Remover Produtos do Estoque | 2024-10-21 A | 2024-10-22 A | 0% → 100% | 1d → none |
| 86 | [RFS21] - Cadastrar Despesas Financeiras | 2024-10-18 A | 2024-10-21 A | 0% → 100% | 2d → none |
| 87 | [RFS22] - Consultar Despesas Financeiras | 2024-10-21 A | 2024-10-22 A | 0% → 100% | 1d → none |
| 88 | [RFS23] - Atualizar Despesas Financeiras | 2024-10-21 A | 2024-10-22 A | 0% → 100% | 1d → none |
| 89 | [RFS24] - Remover Despesas Financeiras | 2024-10-21 A | 2024-10-22 A | 0% → 100% | 1d → none |

## Version 4 (saved 2024-11-24, file CronogramaRelease3.mpp)

Note of the change: Merge pull request #15 from Joaowip/release3

Last finish stays 2024-10-25. Complete tasks 66 → 70.

Changed:

| ID | Task | Start | Finish | Complete | Total float |
| --- | --- | --- | --- | --- | --- |
| 1 | **Projeto Barbearia** |  |  | 90% → 96% |  |
| 30 | **Implementação** |  | 2024-10-23 A | 92% → 100% | 0d → none |
| 69 | **Release 03** |  | 2024-10-23 A | 80% → 100% | 0d → none |
| 70 | **Implementação** |  | 2024-10-22 A | 80% → 100% | 0d → none |
| 79 | [RFS25] - Gerar Relatórios de Desempenho | 2024-10-21 A | 2024-10-22 A | 0% → 100% | 0d → none |
| 80 | [RFS26] - Emitir Guia de Controle de Estoque | 2024-10-21 A | 2024-10-22 A | 0% → 100% | 0d → none |
| 81 | **Teste** |  | 2024-10-23 A | 80% → 100% | 0d → none |
| 90 | [RFS25] - Gerar Relatórios de Desempenho | 2024-10-22 A | 2024-10-23 A | 0% → 100% | 0d → none |
| 91 | [RFS26] - Emitir Guia de Controle de Estoque | 2024-10-22 A | 2024-10-23 A | 0% → 100% | 0d → none |
